How a schedule from an exported table changed from version to version. A marks actual dates.

## Version 1 (saved 2026-06-08)

Note of the change: Merge branch 'feat/620-atlas-sample-loader' into 'main'

| Task | Start |
| --- | --- |
| Bayside Civic Center | 2026-01-05 |
| Site Prep |  |
| Mobilize site |  |
| Clear & grade |  |
| Temporary utilities |  |
| Site survey sign-off |  |
| Foundation |  |
| Excavate footings |  |
| Rebar & formwork |  |
| Pour east footing |  |
| Pour west footing |  |
| Cure & strip forms |  |
| Framing |  |
| Steel erection |  |
| Floor decking |  |
| Roof structure |  |
| Framing inspection |  |
| MEP |  |
| Rough-in electrical |  |
| Rough-in plumbing |  |
| HVAC ductwork |  |
| MEP equipment delivery |  |
| MEP inspection |  |
| Finish-out |  |
| Drywall & paint |  |
| Flooring |  |
| Fixtures & casework |  |
| Commissioning start |  |
| Final inspection & handover |  |

## Version 2 (saved 2026-06-11)

Note of the change: Merge remote-tracking branch 'origin/main' into feat/986-epic-api-first-completeness-close-client

Changed:

| Task | Start |
| --- | --- |
| Bayside Civic Center | 2026-01-05 → A-90 |

## Version 3 (saved 2026-07-16)

Note of the change: feat(api): informational task-to-task relations (TaskRelation) (#2065)

Added:

| Task | Start |
| --- | --- |
| Sitework & Structure | A-90 |
| Structure topped out |  |
| Building & Fit-out | A-90 |
| Certificate of occupancy |  |

Removed: Bayside Civic Center

## Version 4 (saved 2026-09-14)

Note of the change: Merge remote-tracking branch 'origin/main' into feat/3496-a-kanban-flow-lane-bug-spike-tech-debt-t

Added:

| Task |
| --- |
| Weekly site status report |
